"Epic / Task","Name","Description","Definition of Done (DoD)","Assignee","Start Date","End Date","Estimate (in hours)"
"[T7] Epic 1","Доставка: веб-версія та Android APK","Зробити так, щоб гру можна було відкрити за посиланням у браузері й поставити на телефон офлайн-APK (обов’язкова умова проєкту) без Google Play.","Гра відкривається за публічним посиланням, актуальний APK не більший за 25 МіБ лежить у GitHub Release, чекліст перевірки на реальному телефоні пройдено.","Повзун Валерій","Oct 19, 2026","Oct 26, 2026","28"
"[T7] Task 1.1","Шляхи ресурсів через BASE_URL","Замінити жорсткі абсолютні шляхи (/art/…, /voice/…, manifest, service worker) на шляхи від import.meta.env.BASE_URL і налаштувати base у Vite.","Веб-збірка з base=/osbb-end-of-world/ не дає жодного 404 на ресурси у вкладці Network; tsc і тести проходять; збірка APK не зламана.","Повзун Валерій","Oct 19, 2026","Oct 19, 2026","6"
"[T7] Task 1.2","Деплой на GitHub Pages","Зібрати веб-версію і опублікувати у гілку gh-pages (скрипт або GitHub Action), увімкнути Pages у налаштуваннях репозиторію.","Посилання https://valera99686.github.io/osbb-end-of-world/ відкриває гру; повторний деплой виконується однією командою; посилання додано до README.","Повзун Валерій","Oct 20, 2026","Oct 20, 2026","4"
"[T7] Task 1.3","PWA та офлайн у веб-версії","Перевірити service worker і manifest під підшляхом, офлайн-режим та встановлення на домашній екран.","Після першого завантаження гра запускається без мережі в Chrome та на Android; у Lighthouse немає критичних зауважень PWA.","Повзун Валерій","Oct 21, 2026","Oct 21, 2026","4"
"[T7] Task 1.4","Збірка актуального APK і контроль розміру","Перезібрати APK скриптом build:android після змін у коді, перевірити підпис, розмір і версію.","releases/osbb.apk ≤ 26 214 400 байт; versionName збігається з package.json; збірка відтворюється зі свіжого клону репозиторію.","Повзун Валерій","Oct 22, 2026","Oct 22, 2026","4"
"[T7] Task 1.5","Перевірка APK на реальному телефоні","Встановити APK на Android-пристрій і пройти чекліст: старт, збереження, музика та голоси (автозапуск звуку у WebView), дотик/геймпад, поворот екрана, вихід і повернення.","Чекліст у docs/qa/android.md заповнено; кожен дефект заведено як issue з міткою; критичних дефектів немає.","Повзун Валерій","Oct 23, 2026","Oct 26, 2026","6"
"[T7] Task 1.6","Публікація APK як GitHub Release","Створити Release з APK, контрольною сумою SHA-256 та інструкцією встановлення.","На сторінці Release є APK і SHA-256; у README є розділ «Як встановити APK»; завантажений файл ставиться на чистий телефон.","Повзун Валерій","Oct 26, 2026","Oct 26, 2026","4"
"[T7] Epic 2","Звук, озвучка та сюжет","Довести звук і сюжет: музика не перекриває голос, інтерфейс має звуки, усі репліки озвучені, три кінцівки мають досягнення та реакції в Притулку, боси мають портрети.","Жодна репліка сюжету не лишилась без озвучки, кліки мають звук, нові досягнення й реакції працюють, старі збереження не ламаються, APK у межах ліміту.","Повзун Валерій","Oct 27, 2026","Nov 10, 2026","40"
"[T7] Task 2.1","Приглушення музики під голос","Музика Web Audio плавно знижує гучність, поки грає озвучена репліка, і повертається після неї.","Під час голосу музика ≤ 35 % гучності, повернення за ≤ 0,6 с; налаштування музики й голосу працюють незалежно; є тест на логіку приглушення.","Повзун Валерій","Oct 27, 2026","Oct 27, 2026","4"
"[T7] Task 2.2","Звуки інтерфейсу","Підключити наявний звук ui до кліків меню, вибору перків і діалогів з урахуванням налаштування SFX.","Усі кнопки меню, діалогу й перків мають звук; вимкнений SFX мовчить повністю; немає подвійного звуку на hover і click.","Повзун Валерій","Oct 28, 2026","Oct 28, 2026","4"
"[T7] Task 2.3","Озвучка реплік з номером спроби","Заздалегідь згенерувати в OmniVoice голос для реплік з {attempt}/{runs} (спроби 1–20) і підключити їх.","Для спроб 1–20 є файли в public/voice; manifest оновлено; voice.test.cjs перевіряє покриття; приріст APK ≤ 1 МіБ.","Повзун Валерій","Oct 29, 2026","Oct 30, 2026","6"
"[T7] Task 2.4","Перекаст голосів за відгуком","Зібрати відгук про 13 голосів, змінити референси у voices.json і перегенерувати обрані репліки.","Кожен голос затверджений або замінений; generate.py --only <key> --force відпрацював; нові файли в репозиторії; APK у ліміті.","Повзун Валерій","Nov 2, 2026","Nov 3, 2026","6"
"[T7] Task 2.5","Досягнення за сюжет","Додати досягнення за збір доказів, кожну з трьох кінцівок і повне досьє та показати їх у розділі досягнень.","Нові досягнення мають іконку, текст і умову; видаються один раз; тести (кількість, отримання) оновлено; міграція не ламає старі збереження.","Повзун Валерій","Nov 4, 2026","Nov 4, 2026","6"
"[T7] Task 2.6","Репліки Притулку після кінцівок","Додати розмови мешканців, які реагують на побачені кінцівки.","Щонайменше 12 нових реплік з озвучкою; з’являються лише після відповідної кінцівки; story.test.cjs покриває умови.","Повзун Валерій","Nov 5, 2026","Nov 6, 2026","6"
"[T7] Task 2.7","Портрети босів локацій","Створити три портрети босів для карток бою (GPT Image 2.5 Flare у стилі гри).","Три webp ≤ 60 КБ кожен у public/art; показуються на інтро боса; промпти збережено в docs/art-prompts; APK у ліміті.","Повзун Валерій","Nov 9, 2026","Nov 10, 2026","8"
"[T7] Epic 3","Баланс, якість та інженерія","Перевірити гру руками, а не лише автоматикою, та автоматизувати перевірки й зменшити вагу проєкту.","Є журнал живого тестування, баланс-аудит і тести зелені, доступність перевірена, кожен push перевіряється CI, основний чанк менший за 400 КБ.","Повзун Валерій","Nov 11, 2026","Nov 24, 2026","36"
"[T7] Task 3.1","Три повні проходи з журналом","Пройти гру тричі різними героями та зброєю, записуючи спроби, смерті й нудні місця.","Журнал у docs/balance з датою; для кожної локації є час проходження і список проблем.","Повзун Валерій","Nov 11, 2026","Nov 12, 2026","8"
"[T7] Task 3.2","Виправлення знахідок балансу","Підкрутити параметри ворогів, перків і нагород за журналом.","Баланс-аудит проходить гейти; нові значення описані в docs/balance; тести зелені.","Повзун Валерій","Nov 13, 2026","Nov 16, 2026","8"
"[T7] Task 3.3","Перевірка доступності","Перевірити режим для дальтоніків, розмір тексту, зменшення спалахів, геймпад і малі екрани 360×640.","Чекліст пройдено; дефекти виправлено або заведено як issues; є скріншоти до і після.","Повзун Валерій","Nov 17, 2026","Nov 18, 2026","6"
"[T7] Task 3.4","CI у GitHub Actions","Workflow з перевірками типів, лінтом, node --test і збіркою на кожен push та pull request.","У README є бейдж зі статусом; workflow стає червоним, якщо тести чи збірка падають.","Повзун Валерій","Nov 19, 2026","Nov 19, 2026","4"
"[T7] Task 3.5","Очищення репозиторію і залежностей","Прибрати старі архіви .tools/osbb-site-v*.tar.gz і невикористані залежності після перевірки.","tsc, тести, веб-збірка та APK-збірка проходять; список видаленого зафіксовано в PR; розмір робочої теки зменшився.","Повзун Валерій","Nov 20, 2026","Nov 20, 2026","4"
"[T7] Task 3.6","Розбиття бандла","Винести сюжет, діалоги, досьє й налаштування в окремі lazy-чанки.","Основний чанк < 400 КБ (зараз ≈ 680 КБ); запуск гри без регресій; тести та APK-збірка зелені.","Повзун Валерій","Nov 23, 2026","Nov 24, 2026","6"
"[T7] Epic 4","Документація та реліз 1.0","Описати проєкт так, щоб його зрозуміла нова людина, і випустити версію 1.0.0 до 30 листопада.","Є архітектурний опис, README із запуском за 10 хвилин, посібник гравця, тег v1.0.0 з APK та веб-версією; технічна розробка завершена 30.11.","Повзун Валерій","Nov 24, 2026","Nov 30, 2026","28"
"[T7] Task 4.1","Технічна документація й архітектура","Описати архітектуру (рушій, модель, збереження, сюжет, озвучка, збірка), схему модулів і правила додавання контенту.","docs/architecture.md зі схемою модулів і прикладом додавання нового ворога, перка та репліки; нова людина розуміє структуру за 15 хвилин; є посилання з README.","Повзун Валерій","Nov 24, 2026","Nov 25, 2026","6"
"[T7] Task 4.2","README: запуск і збірка за 10 хвилин","Покрокова інструкція: клонування, npm install, dev-сервер, тести, збірка веб-версії та APK, перегенерація озвучки.","Нова людина клонує репозиторій і запускає гру локально менш ніж за 10 хвилин за README; перевірено на чистій теці.","Повзун Валерій","Nov 25, 2026","Nov 25, 2026","4"
"[T7] Task 4.3","Посібник гравця (PDF)","Ілюстрований посібник: керування, перки, зброя, будинок, режими, сюжет без спойлерів.","PDF щонайменше з 10 скріншотами лежить у docs і має посилання з README; керування для дотику, клавіатури та геймпада описане.","Повзун Валерій","Nov 26, 2026","Nov 26, 2026","6"
"[T7] Task 4.4","Заморожування функцій і release candidate","Версія 1.0.0-rc, CHANGELOG, оновлений README, фінальний баланс.","Версія в package.json і Android збігається; CHANGELOG написано; тег v1.0.0-rc; задачі епіків 1–6 закрито або свідомо перенесено.","Повзун Валерій","Nov 27, 2026","Nov 27, 2026","6"
"[T7] Task 4.5","Фінальна регресія і тег v1.0.0","Повна регресія: тести, баланс-аудит, веб, APK; тег і Release. Технічна розробка завершується 30.11.","Усі перевірки зелені; Release v1.0.0 містить APK і SHA-256; веб-версія відповідає релізу.","Повзун Валерій","Nov 30, 2026","Nov 30, 2026","6"
"[T7] Epic 5","Крос-тестування та захист","Провести крос-тестування з іншими командами (1–15 грудня), виправити знайдене та підготуватися до захисту перед представником Нової Пошти.","Проведено крос-тест, критичні й високі баги закриті, презентація й демо готові та прогнані на чистому пристрої.","Повзун Валерій","Dec 1, 2026","Dec 15, 2026","28"
"[T7] Task 5.1","Тест-кейси для крос-тестування","Написати інструкцію й тест-кейси для тестувальників з інших команд: веб-посилання, APK, чекліст, шаблон баг-репорту.","Файл docs/qa/crosstest.md; посилання на веб-версію працює; є шаблон issue для багів.","Повзун Валерій","Dec 1, 2026","Dec 2, 2026","4"
"[T7] Task 5.2","Крос-тест проєктів інших команд","Протестувати 1–2 чужі проєкти й надіслати структуровані баг-репорти.","Щонайменше 2 звіти з кроками, очікуваним і фактичним результатом; команди підтвердили отримання.","Повзун Валерій","Dec 3, 2026","Dec 9, 2026","8"
"[T7] Task 5.3","Виправлення за результатами крос-тесту","Розібрати звіти, виправити баги, прогнати регресію.","Критичні й високі баги закриті; нова збірка APK та веб; CHANGELOG оновлено.","Повзун Валерій","Dec 10, 2026","Dec 11, 2026","8"
"[T7] Task 5.4","Презентація та демо для захисту","Слайди (проблема, ідея, архітектура, результати, що далі), демо-сценарій на 5 хвилин, запис відео як запасний варіант.","Презентація й відео лежать у репозиторії; демо пройдено на чистому пристрої без збоїв; підготовлені відповіді на питання.","Повзун Валерій","Dec 14, 2026","Dec 15, 2026","8"
